# Metasepi Project

Schedule from Planner, 2014-05-12 to 2015-01-02.

## Calendars

- デフォルト: Mon-Fri 08:00-12:00, 13:00-17:00; Sat-Sun off.

## Schedule

| ID | WBS | Task | Type | Duration | Start | Finish | Predecessors | Constraint | Work |
| --- | --- | --- | --- | --- | --- | --- | --- | --- | --- |
| 1 | 1 | **ATS demo on tiny CPU** |  |  | 2014-05-12 | 2014-05-26 |  |  | 88h |
| 2 | 1.1 | AVR support to ATS |  |  | 2014-05-12 | 2014-05-20 |  |  | 51h |
| 3 | 1.2 | ARM support to ATS |  |  | 2014-05-20 | 2014-05-26 | 2 |  | 37h |
| 4 | 2 | **Translate ATS doc** |  |  | 2014-05-12 | 2014-06-10 |  |  | 176h |
| 5 | 2.1 | ATS2TUTORIAL |  |  | 2014-05-12 | 2014-05-26 |  |  | 88h |
| 6 | 2.2 | INT2PROGINATS |  |  | 2014-05-27 | 2014-06-10 | 5 |  | 88h |
| 7 | 3 | **ATS Ethernet driver** |  |  | 2014-06-11 | 2014-09-17 | 4 |  | 566.25h |
| 8 | 3.1 | Support W5100 |  |  | 2014-06-11 | 2014-07-02 |  |  | 126.25h |
| 9 | 3.2 | Support mbed |  |  | 2014-07-02 | 2014-07-16 | 8 |  | 80h |
| 10 | 3.3 | Rewrite uIP (or lwIP) |  |  | 2014-07-16 | 2014-08-20 | 9 |  | 200h |
| 11 | 3.4 | Support ENC28J60 |  |  | 2014-08-20 | 2014-09-17 | 10 |  | 160h |
| 12 | 4 | OSC@Nagoya | milestone | 0d | 2014-07-04 | 2014-07-04 | 8 | must start on 2014-07-04 |  |
| 13 | 5 | OSC@Kansai | milestone | 0d | 2014-08-01 | 2014-08-01 |  | must start on 2014-08-01 |  |
| 14 | 6 | ATS OS X installer |  |  | 2014-09-17 | 2014-09-26 | 7 |  | 56h |
| 15 | 7 | ATS Windows installer |  |  | 2014-09-26 | 2014-10-24 | 14 |  | 160h |
| 16 | 8 | **Ready up Functional IoT** |  |  | 2014-10-24 | 2014-11-21 | 15 |  | 160h |
| 17 | 8.1 | gdbserver test |  |  | 2014-10-24 | 2014-11-04 |  |  | 56h |
| 18 | 8.2 | Write manual |  |  | 2014-11-04 | 2014-11-21 | 17 |  | 104h |
| 19 | 8.3 | Meetup at Nagoya | milestone | 0d | 2014-11-21 | 2014-11-21 | 18 |  |  |
| 20 | 9 | **ATS snatches NetBSD** |  |  | 2014-11-21 | 2015-01-02 | 16 |  | 240h |
| 21 | 9.1 | Setup raspberrypi |  |  | 2014-11-21 | 2014-12-12 |  |  | 120h |
| 22 | 9.2 | Choose snatch target |  |  | 2014-12-12 | 2014-12-26 | 21 |  | 80h |
| 23 | 9.3 | Setup ATS config |  |  | 2014-12-26 | 2015-01-02 | 22 |  | 40h |
